# Diagrama Gantt con depreciacion de equipos, consumo energetico y nube

How a schedule from MS Project changed from version to version. A marks actual dates.

## Version 1 (saved 2021-06-01, file Fase II - Diagrama Gantt.mpp)

| ID | WBS | Task | Duration | Start | Finish | Predecessors | Complete | Total float | Constraint |
| --- | --- | --- | --- | --- | --- | --- | --- | --- | --- |
| 1 | 1 | **Sistema de información para la gestión de la producción avícola de traspatio urbana y periurbana con vocación de postura** | 385d | 2020-12-01 09:00 A | 2022-05-20 19:00 |  | 15% | 0d |  |
| 2 | 1.1 | **1. Analisis** | 78.25d | 2020-12-01 09:00 A | 2021-03-18 11:00 A |  | 100% |  |  |
| 3 | 1.1.1 | **Componente Metodologico** | 78.25d | 2020-12-01 09:00 A | 2021-03-18 11:00 A |  | 100% |  |  |
| 4 |  | Nombre del proyecto | 0.12d | 2020-12-01 09:00 A | 2020-12-01 10:00 A |  | 100% |  |  |
| 5 |  | Objetivo general | 0.12d | 2021-01-02 09:00 A | 2021-01-02 10:00 A | 4 | 100% |  | start no earlier than 2021-01-02 09:00 |
| 6 |  | Objetivos especificos | 0.12d | 2021-01-07 09:00 A | 2021-01-07 10:00 A | 5 | 100% |  | start no earlier than 2021-01-07 09:00 |
| 7 |  | Planteamiento del problema | 0.5d | 2021-01-07 09:00 A | 2021-01-07 13:00 A | 5 | 100% |  | start no earlier than 2021-01-07 09:00 |
| 8 |  | Alcance del proyecto | 0.25d | 2021-01-08 09:00 A | 2021-01-08 11:00 A | 7 | 100% |  | start no earlier than 2021-01-07 09:00 |
| 9 |  | Justificacion | 0.5d | 2021-01-08 09:00 A | 2021-01-08 13:00 A | 7 | 100% |  | start no earlier than 2021-01-07 09:00 |
| 10 | 1.1.1.7 | **Levantamiento de informacion** | 53.25d | 2021-01-04 09:00 A | 2021-03-18 11:00 A |  | 100% |  |  |
| 11 |  | Entrevista a experto avicola | 0.25d | 2021-01-04 09:00 A | 2021-01-04 11:00 A | 5 | 100% |  |  |
| 12 |  | Entrevista a productor avicola | 0.25d | 2021-03-18 09:00 A | 2021-03-18 11:00 A | 11 | 100% |  | start no earlier than 2021-03-18 09:00 |
| 13 |  | Encuesta | 1.25d | 2021-03-17 09:00 A | 2021-03-18 11:00 A | 11 | 100% |  | finish no earlier than 2021-03-25 19:00 |
| 14 | 1.2 | **2. Planeacion:** | 114d | 2021-03-03 09:00 A | 2021-08-09 19:00 |  | 55% | 0d |  |
| 15 | 1.2.1 | **Informe de Requerimientos (Estandar IEEE 830)** | 5.75d | 2021-03-03 09:00 A | 2021-03-10 17:00 A |  | 100% |  |  |
| 16 |  | Requerimientos funcionales y no funcionales | 0.12d | 2021-03-05 09:00 A | 2021-03-05 10:00 A | 10 | 100% |  |  |
| 17 |  | Especificaciones de casos de uso | 0.12d | 2021-03-03 09:00 A | 2021-03-05 11:00 A | 16 | 100% |  | start no earlier than 2020-12-03 09:00 |
| 18 |  | Diagrama de casos de uso | 0.5d | 2021-03-04 09:00 A | 2021-03-04 13:00 A | 17 | 100% |  |  |
| 19 |  | Caso de uso extendido | 0d | 2021-03-09 09:00 A | 2021-03-10 17:00 A | 17 | 100% |  |  |
| 20 | 1.2.2 | **Ejecucion admnistrativa** | 4d | 2021-05-03 09:00 A | 2021-05-06 19:00 |  | 50% | 0d |  |
| 21 |  | Cronograma, presupuesto y selección de personal | 2d | 2021-05-03 09:00 A | 2021-05-04 19:00 A | 5 | 100% |  |  |
| 22 |  | Informe de costos (hardware y software) | 2d | 2021-05-05 09:00 | 2021-05-06 19:00 | 21 |  |  |  |
| 23 | 1.2.3 | **Diseño conceptual** | 110d | 2021-03-09 09:00 A | 2021-08-09 19:00 |  | 52% | 0d |  |
| 24 |  | Mapa de procesos BPMN | 0.12d | 2021-03-19 09:00 A | 2021-03-19 10:00 A | 12 | 100% |  | start no earlier than 2020-12-09 09:00 |
| 25 |  | Diagrama de flujo de proceso BPMN | 0.38d | 2021-03-09 09:00 A | 2021-03-10 11:00 A | 17 | 100% |  | start no earlier than 2020-12-09 09:00 |
| 26 |  | Diagrama de despliegue | 0.12d | 2021-05-10 09:00 A | 2021-05-10 10:00 A | 17 | 100% |  | start no earlier than 2021-05-10 09:00 |
| 27 |  | Modelo entidad-relacion y diccionario de datos | 0.5d | 2021-05-10 09:00 A | 2021-05-10 13:00 A | 17 | 100% |  | start no earlier than 2021-05-10 09:00 |
| 28 |  | Diagrama de clases | 1d | 2021-05-10 15:00 A | 2021-05-11 13:00 A | 27 | 100% |  |  |
| 29 |  | Diagrama de distribución mínimo en software | 2d | 2021-08-06 09:00 | 2021-08-09 19:00 | 31 |  |  |  |
| 30 | 1.3 | **3. Ejecucion:** | 161d | 2021-05-10 09:00 A | 2021-12-20 19:00 |  | 9% | 109d |  |
| 31 | 1.3.1 | **Base de datos** | 5d | 2021-07-30 09:00 | 2021-08-05 19:00 |  |  | 186d |  |
| 32 |  | Construccion de la Base de Datos | 3d | 2021-07-30 09:00 | 2021-08-03 19:00 | 27 |  | 186d | start no earlier than 2021-07-30 09:00 |
| 33 |  | Datos insertados en la Base de Datos | 1d | 2021-08-04 09:00 | 2021-08-04 19:00 | 32 |  | 205d | start no earlier than 2021-07-30 09:00 |
| 34 |  | Consultas y Joins en la Base de Datos | 2d | 2021-08-04 09:00 | 2021-08-05 19:00 | 32 |  | 204d | start no earlier than 2021-07-30 09:00 |
| 35 | 1.3.2 | **Prototipado** | 2d | 2021-05-10 09:00 A | 2021-05-11 19:00 A |  | 100% |  |  |
| 36 |  | Prototipo no funcional: Mockup | 2d | 2021-05-10 09:00 A | 2021-05-11 19:00 A | 15 | 100% |  | start no earlier than 2021-05-10 09:00 |
| 37 | 1.3.3 | **Codificacion y conexión con la base de datos** | 36d | 2021-10-15 09:00 | 2021-12-03 19:00 |  |  | 120d |  |
| 38 |  | Codificacion y manejo de CRUD | 7d | 2021-10-15 09:00 | 2021-10-25 19:00 | 32 |  | 149d | start no earlier than 2021-10-15 09:00 |
| 39 |  | Conexion base de datos | 3d | 2021-11-03 09:00 | 2021-11-05 19:00 | 32 |  | 140d | start no earlier than 2021-11-03 09:00 |
| 40 |  | Crud funcional modulos del sistema | 3d | 2021-12-01 09:00 | 2021-12-03 19:00 | 32 |  | 101d | start no earlier than 2021-12-01 09:00 |
| 41 |  | Informe de migración de datos | 1d | 2021-12-20 09:00 | 2021-12-20 19:00 | 48 |  |  |  |
| 42 | 1.4 | **4. Negociacion** | 4d | 2022-03-11 09:00 | 2022-03-16 19:00 |  |  | 0d |  |
| 43 |  | Cuadro comparativo de proveedores | 1d | 2022-03-11 09:00 | 2022-03-11 19:00 |  |  |  |  |
| 44 |  | Contrato de desarrollo | 3d | 2022-03-14 09:00 | 2022-03-16 19:00 | 43 |  | 47d |  |
| 45 | 1.5 | **5. Evaluacion: Construccion de manuales** | 120d | 2021-12-06 09:00 | 2022-05-20 19:00 |  |  | 0d |  |
| 46 | 1.5.1 | **Pruebas** | 18d | 2021-12-06 09:00 | 2021-12-29 19:00 |  |  | 0d |  |
| 47 |  | Documentación de las pruebas | 3d | 2021-12-06 09:00 | 2021-12-08 19:00 | 40 |  |  |  |
| 48 |  | Pruebas (unitarias, de caja negra y blanca) | 15d | 2021-12-09 09:00 | 2021-12-29 19:00 | 47 |  |  |  |
| 49 | 1.5.2 | **Manuales** | 117d | 2021-12-09 09:00 | 2022-05-20 19:00 |  |  | 0d |  |
| 50 |  | Manual de operación y manual de usuario | 7d | 2022-05-12 09:00 | 2022-05-20 19:00 | 47 |  | 0d | start no earlier than 2022-05-12 09:00 |
| 51 |  | Manual tecnico y manual de instalacion | 7d | 2021-12-09 09:00 | 2021-12-17 19:00 | 47 |  | 110d | finish no earlier than 2020-12-01 19:00 |

## Version 2 (saved 2021-09-16, file Fase II - Diagrama Gantt v2.mpp)

Last finish stays 2022-05-20. Complete tasks 20 → 15.

Removed: 29 Diagrama de distribución mínimo en software

Changed:

| ID | Task | Start | Finish | Duration | Complete | Total float | Other |
| --- | --- | --- | --- | --- | --- | --- | --- |
| 1 | **Sistema de información para la gestión de la producción avícola de traspatio urbana y periurbana con vocación de postura** |  |  | 385d → 384d | 15% → 14% | 0d → none |  |
| 2 | **1. Analisis** |  | 2021-03-18 11:00 A → 2021-03-25 19:00 (+7d) | 78.25d → 83d | 100% → 29% |  |  |
| 3 | **Componente Metodologico** |  | 2021-03-18 11:00 A → 2021-03-25 19:00 (+7d) | 78.25d → 83d | 100% → 29% |  |  |
| 4 | Nombre del proyecto |  | 2020-12-01 10:00 A → 2020-12-01 09:30 A | 0.12d → 0.06d |  |  | resources Juan Carlos Suarez → Juan Carlos Suarez; Equipo de computo; Silla; Energia; Escritorio; Internet |
| 5 | Objetivo general | 2021-01-02 09:00 A → 2021-01-25 09:00 A (+23d) | 2021-01-02 10:00 A → 2021-01-25 17:00 A (+23d) | 0.12d → 0.75d |  |  | constraint start no earlier than 2021-01-02 09:00 → finish no earlier than 2021-01-25 17:00; resources Juan Carlos Suarez → Juan Carlos Suarez; Equipo de computo [200%]; Silla [200%]; Energia; Escritorio [200%]; Internet |
| 6 | Objetivos especificos | 2021-01-07 09:00 A → 2021-01-25 09:00 A (+18d) | 2021-01-07 10:00 A → 2021-02-25 17:00 A (+49d) |  |  |  | constraint start no earlier than 2021-01-07 09:00 → finish no earlier than 2021-01-25 17:00; resources Juan Carlos Suarez → Juan Carlos Suarez; Equipo de computo; Silla; Energia; Escritorio; Internet |
| 7 | Planteamiento del problema | 2021-01-07 09:00 A → 2021-01-25 09:00 A (+18d) | 2021-01-07 13:00 A → 2021-01-25 18:00 (+18d) | 0.5d → 0.88d | 100% → 0% |  | constraint start no earlier than 2021-01-07 09:00 → start no earlier than 2021-01-25 09:00; resources Juan Carlos Suarez → Juan Carlos Suarez; Equipo de computo; Silla; Energia; Escritorio; Internet |
| 8 | Alcance del proyecto | 2021-01-08 09:00 A → 2021-01-26 09:00 A (+18d) | 2021-01-08 11:00 A → 2021-01-27 17:00 (+19d) | 0.25d → 0.75d | 100% → 0% |  | constraint start no earlier than 2021-01-07 09:00 → none; resources Juan Carlos Suarez → Juan Carlos Suarez; Equipo de computo; Silla; Energia; Escritorio; Internet |
| 9 | Justificacion | 2021-01-08 09:00 A → 2021-01-27 09:00 A (+19d) | 2021-01-08 13:00 A → 2021-01-27 17:00 A (+19d) |  |  |  | constraint start no earlier than 2021-01-07 09:00 → start no earlier than 2021-01-27 09:00; resources Juan Carlos Suarez → Juan Carlos Suarez; Equipo de computo; Silla; Energia; Escritorio; Internet |
| 10 | **Levantamiento de informacion** | 2021-01-04 09:00 A → 2021-02-25 17:00 (+52d) | 2021-03-18 11:00 A → 2021-03-25 19:00 (+7d) | 53.25d → 20.25d | 100% → 25% |  |  |
| 11 | Entrevista a experto avicola | 2021-01-04 09:00 A → 2021-02-03 09:00 A (+30d) | 2021-01-04 11:00 A → 2021-02-03 11:00 A (+30d) |  |  |  | constraint none → finish no earlier than 2021-02-03 17:00; resources Juan Carlos Suarez → Juan Carlos Suarez; Equipo de computo; Silla; Energia; Escritorio; Internet |
| 12 | Entrevista a productor avicola | 2021-03-18 09:00 A → 2021-02-05 09:00 A (-41d) | 2021-03-18 11:00 A → 2021-02-05 18:00 (-41d) | 0.25d → 0.88d | 100% → 14% |  | constraint start no earlier than 2021-03-18 09:00 → start no earlier than 2021-02-05 09:00; resources Juan Carlos Suarez → Juan Carlos Suarez; Equipo de computo; Silla; Energia; Escritorio; Internet |
| 13 | Encuesta | 2021-03-17 09:00 A → 2021-02-01 09:00 A (-44d) | 2021-03-18 11:00 A → 2021-03-05 17:00 (-13d) | 1.25d → 10.5d | 100% → 24% |  | constraint finish no earlier than 2021-03-25 19:00 → finish no earlier than 2021-02-05 17:00; resources Eliseo Ricaurte; Juan Carlos Suarez → Eliseo Ricaurte; Juan Carlos Suarez; Energia; Equipo de computo [200%]; Escritorio [200%]; Internet [300%]; Silla [200%] |
| 14 | **2. Planeacion:** | 2021-03-03 09:00 A → 2021-03-04 09:00 A (+1d) | 2021-08-09 19:00 → 2021-05-11 19:00 (-90d) | 114d → 49d | 55% → 71% | 0d → none |  |
| 15 | **Informe de Requerimientos (Estandar IEEE 830)** | 2021-03-03 09:00 A → 2021-03-04 09:00 A (+1d) | 2021-03-10 17:00 A → 2021-04-01 11:00 (+22d) | 5.75d → 20.25d | 100% → 22% |  |  |
| 16 | Requerimientos funcionales y no funcionales |  | 2021-03-05 10:00 A → 2021-03-05 17:00 A |  |  |  | resources Juan Carlos Suarez; Maria de los Angeles Ordoñez → Juan Carlos Suarez; Maria de los Angeles Ordoñez; Energia; Equipo de computo [200%]; Escritorio [200%]; Internet; Silla [200%] |
| 17 | Especificaciones de casos de uso | 2021-03-03 09:00 A → 2021-03-08 10:00 A (+5d) | 2021-03-05 11:00 A → 2021-03-08 17:00 A (+3d) |  |  |  | resources Maria de los Angeles Ordoñez; Juan Carlos Suarez → Maria de los Angeles Ordoñez; Juan Carlos Suarez; Energia; Equipo de computo; Escritorio; Internet; Silla |
| 18 | Diagrama de casos de uso |  | 2021-03-04 13:00 A → 2021-03-04 17:00 A | 0.5d → 0.25d |  |  | resources Nicolas Rodriguez → Nicolas Rodriguez; Energia; Equipo de computo; Escritorio; Internet; Silla |
| 19 | Caso de uso extendido |  | 2021-03-10 17:00 A → 2021-03-10 17:00 | 0d → 1.75d | 100% → 0% |  | resources Nicolas Rodriguez; Eliseo Ricaurte; Juan Carlos Suarez; Maria de los Angeles Ordoñez → Nicolas Rodriguez; Eliseo Ricaurte; Juan Carlos Suarez; Maria de los Angeles Ordoñez; Energia; Equipo de computo [400%]; Escritorio [400%]; Internet [400%]; Silla [400%] |
| 20 | **Ejecucion admnistrativa** |  | 2021-05-06 19:00 → 2021-05-05 13:00 A (-1d) | 4d → 2.5d | 50% → 100% | 0d → none |  |
| 21 | Cronograma, presupuesto y selección de personal |  | 2021-05-04 19:00 A → 2021-05-03 17:00 A (-1d) | 2d → 0.75d |  |  | resources Juan Carlos Suarez → Juan Carlos Suarez; Equipo de computo; Silla; Energia; Escritorio; Internet |
| 22 | Informe de costos (hardware y software) | 2021-05-05 09:00 A | 2021-05-06 19:00 → 2021-05-05 13:00 A (-1d) | 2d → 0.5d | 0% → 100% |  |  |
| 23 | **Diseño conceptual** | 2021-03-09 09:00 A → 2021-03-12 09:00 A (+3d) | 2021-08-09 19:00 → 2021-05-11 19:00 (-90d) | 110d → 43d | 52% → 100% | 0d → none |  |
| 24 | Mapa de procesos BPMN | 2021-03-19 09:00 A → 2021-03-18 15:00 A (-1d) | 2021-03-19 10:00 A → 2021-03-18 17:00 A (-1d) | 0.12d → 0.25d |  |  | resources Juan Carlos Suarez → Juan Carlos Suarez; Equipo de computo; Silla; Energia; Escritorio; Internet |
| 25 | Diagrama de flujo de proceso BPMN | 2021-03-09 09:00 A → 2021-03-12 09:00 A (+3d) | 2021-03-10 11:00 A → 2021-03-12 17:00 A (+2d) | 0.38d → 0.75d |  |  | resources Juan Carlos Suarez; Maria de los Angeles Ordoñez → Juan Carlos Suarez; Maria de los Angeles Ordoñez; Energia; Equipo de computo [200%]; Escritorio [200%]; Internet; Silla [200%] |
| 26 | Diagrama de despliegue |  | 2021-05-10 10:00 A → 2021-05-10 11:00 A | 0.12d → 0.25d |  |  | resources Paola Osorio → Paola Osorio; Energia; Equipo de computo; Escritorio; Internet; Silla |
| 27 | Modelo entidad-relacion y diccionario de datos |  | 2021-05-10 13:00 A → 2021-05-10 19:00 A | 0.5d → 1d |  |  | resources Nicolas Rodriguez → Nicolas Rodriguez; Energia; Equipo de computo; Escritorio; Internet; Silla |
| 28 | Diagrama de clases |  | 2021-05-11 13:00 A → 2021-05-10 17:00 A (-1d) | 1d → 0.25d |  |  | resources Eliseo Ricaurte → Eliseo Ricaurte; Energia; Equipo de computo; Escritorio; Internet; Silla |
| 29 | **3. Ejecucion:** |  | 2021-12-20 19:00 → 2021-12-30 19:00 (+10d) | 161d → 169d | 9% → 10% | 109d → none |  |
| 30 | **Base de datos** | 2021-07-30 09:00 → 2021-09-13 09:00 A (+45d) | 2021-08-05 19:00 → 2021-10-28 17:00 (+84d) | 5d → 33.75d | 0% → 40% | 186d → none |  |
| 31 | Construccion de la Base de Datos | 2021-07-30 09:00 → 2021-09-13 09:00 A (+45d) | 2021-08-03 19:00 → 2021-09-13 17:00 (+41d) | 3d → 0.75d | 0% → 33% | 186d → none | constraint start no earlier than 2021-07-30 09:00 → finish no earlier than 2021-09-13 17:00; resources Nicolas Rodriguez; Eliseo Ricaurte; Juan Carlos Suarez; Paola Osorio → Nicolas Rodriguez; Juan Carlos Suarez; Paola Osorio; Energia; Equipo de computo; Escritorio; Internet; Silla |
| 32 | Datos insertados en la Base de Datos | 2021-08-04 09:00 → 2021-09-15 09:00 A (+42d) | 2021-08-04 19:00 → 2021-09-15 19:00 (+42d) |  | 0% → 25% | 205d → none | resources Nicolas Rodriguez; Eliseo Ricaurte; Juan Carlos Suarez; Paola Osorio → Nicolas Rodriguez; Juan Carlos Suarez; Paola Osorio; Energia; Equipo de computo; Escritorio; Internet; Silla |
| 33 | Consultas y Joins en la Base de Datos | 2021-08-04 09:00 → 2021-09-17 09:00 A (+44d) | 2021-08-05 19:00 → 2021-09-17 17:00 (+43d) | 2d → 0.75d | 0% → 67% | 204d → none | constraint start no earlier than 2021-07-30 09:00 → start no earlier than 2021-09-17 09:00; resources Nicolas Rodriguez; Eliseo Ricaurte; Juan Carlos Suarez; Paola Osorio → Paola Osorio; Energia; Equipo de computo; Escritorio; Internet; Silla |
| 34 | **Prototipado** |  | 2021-05-11 19:00 A → 2021-05-13 19:00 (+2d) | 2d → 4d | 100% → 25% |  |  |
| 35 | Prototipo no funcional: Mockup |  | 2021-05-11 19:00 A → 2021-05-13 19:00 (+2d) | 2d → 4d | 100% → 25% |  | resources Juan Carlos Suarez → Juan Carlos Suarez; Energia; Equipo de computo; Escritorio; Internet; Silla |
| 37 | Codificacion y manejo de CRUD |  |  |  |  | 149d → none | resources Eliseo Ricaurte; Nicolas Rodriguez; Juan Carlos Suarez; Paola Osorio → Eliseo Ricaurte; Nicolas Rodriguez; Juan Carlos Suarez; Paola Osorio; Energia; Equipo de computo; Escritorio; Internet; Silla |
| 38 | Conexion base de datos |  |  |  |  | 140d → none | resources Eliseo Ricaurte; Nicolas Rodriguez; Juan Carlos Suarez; Paola Osorio → Eliseo Ricaurte; Nicolas Rodriguez; Juan Carlos Suarez; Paola Osorio; Energia; Equipo de computo; Escritorio; Internet; Silla |
| 39 | Crud funcional modulos del sistema |  |  |  |  | 101d → none | resources Eliseo Ricaurte; Juan Carlos Suarez; Nicolas Rodriguez; Paola Osorio → Eliseo Ricaurte; Juan Carlos Suarez; Nicolas Rodriguez; Paola Osorio; Energia; Equipo de computo; Escritorio; Internet; Silla |
| 40 | Informe de migración de datos | 2021-12-20 09:00 → 2021-12-30 09:00 (+10d) | 2021-12-20 19:00 → 2021-12-30 19:00 (+10d) |  |  |  | resources Eliseo Ricaurte; Juan Carlos Suarez; Nicolas Rodriguez; Paola Osorio → Eliseo Ricaurte; Juan Carlos Suarez; Nicolas Rodriguez; Paola Osorio; Energia; Equipo de computo; Escritorio; Internet; Silla |
| 42 | Cuadro comparativo de proveedores |  |  |  |  |  | resources Eliseo Ricaurte; Juan Carlos Suarez; Nicolas Rodriguez; Paola Osorio → Eliseo Ricaurte; Juan Carlos Suarez; Nicolas Rodriguez; Paola Osorio; Energia; Equipo de computo; Escritorio; Internet; Silla |
| 43 | Contrato de desarrollo |  |  |  |  | 47d → none | resources Juan Carlos Suarez; Eliseo Ricaurte; Nicolas Rodriguez; Paola Osorio → Juan Carlos Suarez; Eliseo Ricaurte; Nicolas Rodriguez; Paola Osorio; Energia; Equipo de computo; Escritorio; Internet; Silla |
| 46 | Documentación de las pruebas |  |  |  |  |  | resources Eliseo Ricaurte; Juan Carlos Suarez; Nicolas Rodriguez; Paola Osorio → Eliseo Ricaurte; Juan Carlos Suarez; Nicolas Rodriguez; Paola Osorio; Energia; Equipo de computo; Escritorio; Internet; Silla |
| 47 | Pruebas (unitarias, de caja negra y blanca) |  |  |  |  |  | resources AWS MySQL Aurora; Juan Carlos Suarez; Nicolas Rodriguez; Paola Osorio; Eliseo Ricaurte; AWS Data Pipeline → AWS MySQL Aurora; Juan Carlos Suarez; Nicolas Rodriguez; Paola Osorio; Eliseo Ricaurte; AWS Data Pipeline; Energia; Equipo de computo; Escritorio; Internet; Silla |
| 48 | **Manuales** | 2021-12-09 09:00 → 2021-12-31 09:00 (+22d) |  | 117d → 101d |  | 0d → none |  |
| 49 | Manual de operación y manual de usuario |  |  |  |  | 0d → none | resources Eliseo Ricaurte; Juan Carlos Suarez; Nicolas Rodriguez; Paola Osorio → Eliseo Ricaurte; Juan Carlos Suarez; Nicolas Rodriguez; Paola Osorio; Energia; Equipo de computo; Escritorio; Internet; Silla |
| 50 | Manual tecnico y manual de instalacion | 2021-12-09 09:00 → 2021-12-31 09:00 (+22d) | 2021-12-17 19:00 → 2022-01-10 19:00 (+24d) |  |  | 110d → none | resources Eliseo Ricaurte; Juan Carlos Suarez; Nicolas Rodriguez; Paola Osorio → Eliseo Ricaurte; Juan Carlos Suarez; Nicolas Rodriguez; Paola Osorio; Energia; Equipo de computo; Escritorio; Internet; Silla |

## Version 3 (saved 2021-09-16, file Fase II - Diagrama Gantt v2.mpp)

Last finish stays 2022-05-20. Complete tasks 15 → 19.

Changed:

| ID | Task | Finish | Complete |
| --- | --- | --- | --- |
| 1 | **Sistema de información para la gestión de la producción avícola de traspatio urbana y periurbana con vocación de postura** |  | 14% → 31% |
| 2 | **1. Analisis** |  | 29% → 89% |
| 3 | **Componente Metodologico** |  | 29% → 89% |
| 10 | **Levantamiento de informacion** |  | 25% → 100% |
| 12 | Entrevista a productor avicola | 2021-02-05 18:00 A | 14% → 100% |
| 13 | Encuesta | 2021-03-05 17:00 A | 24% → 100% |
| 14 | **2. Planeacion:** |  | 71% → 100% |
| 15 | **Informe de Requerimientos (Estandar IEEE 830)** |  | 22% → 100% |
| 19 | Caso de uso extendido | 2021-03-10 17:00 A | 0% → 100% |
| 29 | **3. Ejecucion:** |  | 10% → 24% |
| 34 | **Prototipado** | 2021-05-13 19:00 A | 25% → 100% |
| 35 | Prototipo no funcional: Mockup | 2021-05-13 19:00 A | 25% → 100% |

## Version 4 (saved 2021-09-19, file Fase II - Diagrama Gantt v3.mpp)

Last finish stays 2022-05-20. Complete tasks 19 → 11.

Added:

| ID | Task | Duration | Start | Finish | Predecessors | Resources |
| --- | --- | --- | --- | --- | --- | --- |
| 23 | Actualizacion de Informe de costos (hardware y software) | 1d | 2021-05-17 A | 2021-05-17 A | 22 | Energia [12.5%]; Equipo de computo; Escritorio; Internet; Juan Carlos Suarez [12.5%]; Silla |
| 37 | Prototipo no funcional: HTML y CCS | 1.5d | 2021-09-13 A | 2021-10-01 | 36 | Eliseo Ricaurte; Energia; Equipo de computo [400%]; Escritorio [400%]; Internet [400%]; Juan Carlos Suarez; Nicolas Rodriguez; Paola Osorio; Silla [400%] |

Changed:

| ID | Task | Start | Finish | Duration | Complete | Total float | Other |
| --- | --- | --- | --- | --- | --- | --- | --- |
| 1 | **Sistema de información para la gestión de la producción avícola de traspatio urbana y periurbana con vocación de postura** | 2020-12-01 09:00 A → 2020-12-01 A | 2022-05-20 19:00 → 2022-05-20 |  | 31% → 27% |  |  |
| 2 | **1. Analisis** | 2020-12-01 09:00 A → 2020-12-01 A | 2021-03-25 19:00 → 2021-03-25 |  | 89% → 77% |  |  |
| 3 | **Componente Metodologico** | 2020-12-01 09:00 A → 2020-12-01 A | 2021-03-25 19:00 → 2021-03-25 |  | 89% → 77% |  |  |
| 4 | Nombre del proyecto | 2020-12-01 09:00 A → 2020-12-01 A | 2020-12-01 09:30 A → 2020-12-01 A |  |  |  |  |
| 5 | Objetivo general | 2021-01-25 09:00 A → 2021-01-25 A | 2021-01-25 17:00 A → 2021-01-25 A |  |  |  | constraint finish no earlier than 2021-01-25 17:00 → finish no earlier than 2021-01-25 |
| 6 | Objetivos especificos | 2021-01-25 09:00 A → 2021-01-25 A | 2021-02-25 17:00 A → 2021-02-26 (+1d) | 0.12d → 1.12d | 100% → 3% |  | constraint finish no earlier than 2021-01-25 17:00 → finish no earlier than 2021-01-25; resources Juan Carlos Suarez; Equipo de computo; Silla; Energia; Escritorio; Internet → Juan Carlos Suarez; Equipo de computo; Silla; Energia; Escritorio; Internet [50%] |
| 7 | Planteamiento del problema | 2021-01-25 09:00 A → 2021-01-25 A | 2021-01-25 18:00 → 2021-01-26 (+1d) | 0.88d → 1d | 0% → 13% |  | constraint start no earlier than 2021-01-25 09:00 → start no earlier than 2021-01-25 |
| 8 | Alcance del proyecto | 2021-01-26 09:00 A → 2021-01-26 A | 2021-01-27 17:00 → 2021-01-27 | 0.75d → 1.62d | 0% → 99% |  |  |
| 9 | Justificacion | 2021-01-27 09:00 A → 2021-01-27 A | 2021-01-27 17:00 A → 2021-01-28 (+1d) | 0.5d → 1.75d | 100% → 22% |  | constraint start no earlier than 2021-01-27 09:00 → start no earlier than 2021-01-27 |
| 10 | **Levantamiento de informacion** | 2021-02-25 17:00 → 2021-02-25 | 2021-03-25 19:00 → 2021-03-25 |  | 100% → 93% |  |  |
| 11 | Entrevista a experto avicola | 2021-02-03 09:00 A → 2021-02-03 A | 2021-02-03 11:00 A → 2021-02-03 A |  |  |  | constraint finish no earlier than 2021-02-03 17:00 → finish no earlier than 2021-02-03 |
| 12 | Entrevista a productor avicola | 2021-02-05 09:00 A → 2021-02-05 A | 2021-02-05 18:00 A → 2021-02-08 (+3d) | 0.88d → 1.25d | 100% → 30% |  | constraint start no earlier than 2021-02-05 09:00 → start no earlier than 2021-02-05 |
| 13 | Encuesta | 2021-02-01 09:00 A → 2021-02-01 A | 2021-03-05 17:00 A → 2021-03-05 A |  |  |  | constraint finish no earlier than 2021-02-05 17:00 → finish no earlier than 2021-02-05 |
| 14 | **2. Planeacion:** | 2021-03-04 09:00 A → 2021-03-04 A | 2021-05-11 19:00 → 2021-05-17 (+6d) | 49d → 53d | 100% → 41% | none → 0d |  |
| 15 | **Informe de Requerimientos (Estandar IEEE 830)** | 2021-03-04 09:00 A → 2021-03-04 A | 2021-04-01 11:00 → 2021-04-01 |  | 100% → 35% |  |  |
| 16 | Requerimientos funcionales y no funcionales | 2021-03-05 09:00 A → 2021-03-05 A | 2021-03-05 17:00 A → 2021-03-08 (+3d) | 0.12d → 1.75d | 100% → 7% |  |  |
| 17 | Especificaciones de casos de uso | 2021-03-08 10:00 A → 2021-03-08 A | 2021-03-08 17:00 A → 2021-03-09 (+1d) | 0.12d → 1.12d | 100% → 11% |  | constraint start no earlier than 2020-12-03 09:00 → start no earlier than 2020-12-03; resources Maria de los Angeles Ordoñez; Juan Carlos Suarez; Energia; Equipo de computo; Escritorio; Internet; Silla → Maria de los Angeles Ordoñez; Juan Carlos Suarez; Energia; Equipo de computo [200%]; Escritorio [200%]; Internet; Silla [200%] |
| 18 | Diagrama de casos de uso | 2021-03-04 09:00 A → 2021-03-04 A | 2021-03-04 17:00 A → 2021-03-05 (+1d) | 0.25d → 1.75d | 100% → 14% |  |  |
| 19 | Caso de uso extendido | 2021-03-09 09:00 A → 2021-03-09 A | 2021-03-10 17:00 A → 2021-03-10 A |  |  |  |  |
| 20 | **Ejecucion admnistrativa** | 2021-05-03 09:00 A → 2021-05-03 A | 2021-05-05 13:00 A → 2021-05-17 (+12d) | 2.5d → 11d | 100% → 47% | none → 0d |  |
| 21 | Cronograma, presupuesto y selección de personal | 2021-05-03 09:00 A → 2021-05-03 A | 2021-05-03 17:00 A → 2021-05-04 (+1d) | 0.75d → 1.75d | 100% → 14% |  |  |
| 22 | Informe de costos (hardware y software) | 2021-05-05 09:00 A → 2021-05-05 A | 2021-05-05 13:00 A → 2021-05-05 | 0.5d → 1d | 100% → 50% |  | resources Juan Carlos Suarez → Juan Carlos Suarez; Energia; Equipo de computo; Escritorio; Internet; Silla |
| 24 | **Diseño conceptual** | 2021-03-12 09:00 A → 2021-03-12 A | 2021-05-11 19:00 → 2021-05-11 |  | 100% → 44% |  |  |
| 25 | Mapa de procesos BPMN | 2021-03-18 15:00 A → 2021-03-18 A | 2021-03-18 17:00 A → 2021-03-18 A |  |  |  | constraint start no earlier than 2020-12-09 09:00 → start no earlier than 2020-12-09 |
| 26 | Diagrama de flujo de proceso BPMN | 2021-03-12 09:00 A → 2021-03-12 A | 2021-03-12 17:00 A → 2021-03-15 (+3d) | 0.75d → 1.75d | 100% → 14% |  | constraint start no earlier than 2020-12-09 09:00 → start no earlier than 2020-12-09; resources Juan Carlos Suarez; Maria de los Angeles Ordoñez; Energia; Equipo de computo [200%]; Escritorio [200%]; Internet; Silla [200%] → Juan Carlos Suarez; Maria de los Angeles Ordoñez; Energia; Equipo de computo [200%]; Escritorio [200%]; Internet [200%]; Silla [200%] |
| 27 | Diagrama de despliegue | 2021-05-10 09:00 A → 2021-05-10 A | 2021-05-10 11:00 A → 2021-05-10 A |  |  |  | constraint start no earlier than 2021-05-10 09:00 → start no earlier than 2021-05-10 |
| 28 | Modelo entidad-relacion y diccionario de datos | 2021-05-10 09:00 A → 2021-05-10 A | 2021-05-10 19:00 A → 2021-05-10 A |  |  |  | constraint start no earlier than 2021-05-10 09:00 → start no earlier than 2021-05-10 |
| 29 | Diagrama de clases | 2021-05-10 15:00 A → 2021-05-10 A | 2021-05-10 17:00 A → 2021-05-11 (+1d) | 0.25d → 1.25d | 100% → 20% |  |  |
| 30 | **3. Ejecucion:** | 2021-05-10 09:00 A → 2021-05-10 A | 2021-12-30 19:00 → 2021-12-30 |  | 24% → 21% |  |  |
| 31 | **Base de datos** | 2021-09-13 09:00 A → 2021-09-13 A | 2021-10-28 17:00 → 2021-10-28 |  | 40% → 64% |  |  |
| 32 | Construccion de la Base de Datos (DDL) | 2021-09-13 09:00 A → 2021-09-13 A | 2021-09-13 17:00 → 2021-09-13 A |  | 33% → 100% |  | was named Construccion de la Base de Datos; constraint finish no earlier than 2021-09-13 17:00 → finish no earlier than 2021-09-13 |
| 33 | Datos insertados en la Base de Datos (DML) | 2021-09-15 09:00 A → 2021-09-17 A (+2d) | 2021-09-15 19:00 → 2021-09-17 A (+2d) |  | 25% → 100% |  | was named Datos insertados en la Base de Datos; constraint start no earlier than 2021-07-30 09:00 → start no earlier than 2021-09-17 |
| 34 | Consultas y Joins en la Base de Datos (DML) | 2021-09-17 09:00 A → 2021-09-17 A | 2021-09-17 17:00 → 2021-09-20 (+3d) | 0.75d → 1.75d | 67% → 29% |  | was named Consultas y Joins en la Base de Datos; constraint start no earlier than 2021-09-17 09:00 → start no earlier than 2021-09-17 |
| 35 | **Prototipado** | 2021-05-10 09:00 A → 2021-05-10 A | 2021-05-13 19:00 A → 2021-09-16 (+126d) | 4d → 93.75d | 100% → 45% |  |  |
| 36 | Prototipo no funcional: Mockup | 2021-05-10 09:00 A → 2021-05-10 A | 2021-05-13 19:00 A → 2021-05-13 |  | 100% → 25% |  | constraint start no earlier than 2021-05-10 09:00 → start no earlier than 2021-05-10 |
| 38 | **Codificacion y conexión con la base de datos** | 2021-10-15 09:00 → 2021-10-15 | 2021-12-03 19:00 → 2021-12-30 (+27d) | 36d → 55d |  |  |  |
| 39 | Codificacion y manejo de CRUD | 2021-10-15 09:00 → 2021-10-15 | 2021-10-25 19:00 → 2021-10-25 |  |  |  | constraint start no earlier than 2021-10-15 09:00 → start no earlier than 2021-10-15 |
| 40 | Conexion base de datos | 2021-11-03 09:00 → 2021-11-03 | 2021-11-05 19:00 → 2021-11-05 |  |  |  | constraint start no earlier than 2021-11-03 09:00 → start no earlier than 2021-11-03 |
| 41 | Crud funcional modulos del sistema | 2021-12-01 09:00 → 2021-12-01 | 2021-12-03 19:00 → 2021-12-03 |  |  |  | constraint start no earlier than 2021-12-01 09:00 → start no earlier than 2021-12-01 |
| 42 | Informe de migración de datos | 2021-12-30 09:00 → 2021-12-30 | 2021-12-30 19:00 → 2021-12-30 |  |  |  |  |
| 43 | **4. Negociacion** | 2022-03-11 09:00 → 2022-03-11 | 2022-03-16 19:00 → 2022-03-16 |  |  |  |  |
| 44 | Cuadro comparativo de proveedores | 2022-03-11 09:00 → 2022-03-11 | 2022-03-11 19:00 → 2022-03-11 |  |  |  |  |
| 45 | Contrato de desarrollo | 2022-03-14 09:00 → 2022-03-14 | 2022-03-16 19:00 → 2022-03-16 |  |  |  |  |
| 46 | **5. Evaluacion: Construccion de manuales** | 2021-12-06 09:00 → 2021-12-06 | 2022-05-20 19:00 → 2022-05-20 |  |  |  |  |
| 47 | **Pruebas** | 2021-12-06 09:00 → 2021-12-06 | 2021-12-29 19:00 → 2021-12-29 |  |  |  |  |
| 48 | Documentación de las pruebas | 2021-12-06 09:00 → 2021-12-06 | 2021-12-08 19:00 → 2021-12-08 |  |  |  |  |
| 49 | Pruebas (unitarias, de caja negra y blanca) | 2021-12-09 09:00 → 2021-12-09 | 2021-12-29 19:00 → 2021-12-29 |  |  |  |  |
| 50 | **Manuales** | 2021-12-31 09:00 → 2021-12-31 | 2022-05-20 19:00 → 2022-05-20 |  |  |  |  |
| 51 | Manual de operación y manual de usuario | 2022-05-12 09:00 → 2022-05-12 | 2022-05-20 19:00 → 2022-05-20 |  |  |  | constraint start no earlier than 2022-05-12 09:00 → start no earlier than 2022-05-12 |
| 52 | Manual tecnico y manual de instalacion | 2021-12-31 09:00 → 2021-12-31 | 2022-01-10 19:00 → 2022-01-10 |  |  |  | constraint finish no earlier than 2020-12-01 19:00 → finish no earlier than 2020-12-01 |

## Version 5 (saved 2021-09-26, file Fase II - Diagrama Gantt v3.1.mpp)

Last finish stays 2022-05-20. Complete tasks 11 → 28.

Added:

| ID | Task | Duration | Start | Finish | Predecessors | Constraint | Resources |
| --- | --- | --- | --- | --- | --- | --- | --- |
| 24 | Uso de sistemas de integración continua | 0.06d | 2021-09-24 A | 2021-09-24 A | 22 | start no earlier than 2021-09-24 | Eliseo Ricaurte; Energia; Equipo de computo; Escritorio; Internet; Microsoft project; Silla |
| 25 | Inventario de hardware y software | 1d | 2021-05-06 A | 2021-05-06 A | 22 |  | Energia; Escritorio; Internet; Juan Carlos Suarez; Silla |

Changed:

| ID | Task | Start | Finish | Duration | Complete | Total float | Other |
| --- | --- | --- | --- | --- | --- | --- | --- |
| 1 | **Sistema de información para la gestión de la producción avícola de traspatio urbana y periurbana con vocación de postura** |  |  |  | 27% → 46% |  |  |
| 2 | **1. Analisis** |  |  |  | 77% → 100% |  |  |
| 3 | **Componente Metodologico** |  |  |  | 77% → 100% |  |  |
| 6 | Objetivos especificos |  | 2021-02-26 A |  | 3% → 100% |  |  |
| 7 | Planteamiento del problema |  | 2021-01-26 A |  | 13% → 100% |  |  |
| 8 | Alcance del proyecto |  | 2021-01-27 A |  | 99% → 100% |  |  |
| 9 | Justificacion |  | 2021-01-28 A |  | 22% → 100% |  |  |
| 10 | **Levantamiento de informacion** |  |  |  | 93% → 100% |  |  |
| 12 | Entrevista a productor avicola |  | 2021-02-08 A |  | 30% → 100% |  |  |
| 14 | **2. Planeacion:** |  | 2021-05-17 → 2021-09-24 A (+130d) | 53d → 146.06d | 41% → 100% | 0d → none |  |
| 15 | **Informe de Requerimientos (Estandar IEEE 830)** |  |  |  | 35% → 100% |  |  |
| 16 | Requerimientos funcionales y no funcionales |  | 2021-03-08 A |  | 7% → 100% |  |  |
| 17 | Especificaciones de casos de uso |  | 2021-03-09 A |  | 11% → 100% |  |  |
| 18 | Diagrama de casos de uso |  | 2021-03-05 A |  | 14% → 100% |  |  |
| 20 | **Ejecucion admnistrativa** |  | 2021-05-17 → 2021-09-24 A (+130d) | 11d → 104.06d | 47% → 100% | 0d → none |  |
| 21 | Cronograma, presupuesto y selección de personal |  | 2021-05-04 A |  | 14% → 100% |  |  |
| 22 | Informe de costos (hardware y software) |  | 2021-05-05 A |  | 50% → 100% |  |  |
| 26 | **Diseño conceptual** |  | 2021-05-11 A |  | 44% → 100% |  |  |
| 28 | Diagrama de flujo de proceso BPMN |  | 2021-03-15 A |  | 14% → 100% |  |  |
| 31 | Diagrama de clases |  | 2021-05-11 A |  | 20% → 100% |  |  |
| 32 | **3. Ejecucion:** |  |  |  | 21% → 37% |  |  |
| 33 | **Base de datos** |  |  |  | 64% → 100% |  |  |
| 36 | Consultas y Joins en la Base de Datos (DML) |  | 2021-09-20 A |  | 29% → 100% |  |  |
| 37 | **Prototipado** |  | 2021-09-16 → 2021-09-22 A (+6d) | 93.75d → 97.75d | 45% → 100% |  |  |
| 38 | Prototipo no funcional: Mockup |  | 2021-05-13 A |  | 25% → 100% |  |  |
| 39 | Prototipo no funcional: HTML y CCS | 2021-09-13 A → 2021-09-22 A (+9d) | 2021-10-01 → 2021-09-22 A (-9d) | 1.5d → 0.75d | 99% → 100% | 165d → none | constraint none → finish no earlier than 2021-09-22; resources Eliseo Ricaurte; Energia; Equipo de computo [400%]; Escritorio [400%]; Internet [400%]; Juan Carlos Suarez; Nicolas Rodriguez; Paola Osorio; Silla [400%] → Eliseo Ricaurte; Energia; Equipo de computo; Escritorio; Internet; Juan Carlos Suarez; Nicolas Rodriguez; Paola Osorio; Silla |

## Version 6 (saved 2021-12-01, file Fase II - Diagrama Gantt v3.2.mpp)

Last finish stays 2022-05-20. Complete tasks 28 → 32.

Changed:

| ID | Task | Start | Finish | Duration | Complete | Total float | Predecessors | Other |
| --- | --- | --- | --- | --- | --- | --- | --- | --- |
| 1 | **Sistema de información para la gestión de la producción avícola de traspatio urbana y periurbana con vocación de postura** |  |  |  | 46% → 70% |  |  |  |
| 13 | Encuesta |  |  |  |  |  |  | resources Eliseo Ricaurte; Juan Carlos Suarez; Energia; Equipo de computo [200%]; Escritorio [200%]; Internet [300%]; Silla [200%] → Juan Carlos Suarez; Energia; Equipo de computo [200%]; Escritorio [200%]; Internet [300%]; Silla [200%] |
| 16 | Requerimientos funcionales y no funcionales |  |  |  |  |  |  | resources Juan Carlos Suarez; Maria de los Angeles Ordoñez; Energia; Equipo de computo [200%]; Escritorio [200%]; Internet; Silla [200%] → Juan Carlos Suarez; Energia; Equipo de computo [200%]; Escritorio [200%]; Internet; Silla [200%] |
| 17 | Especificaciones de casos de uso |  |  | 1.12d → 1d |  |  |  | resources Maria de los Angeles Ordoñez; Juan Carlos Suarez; Energia; Equipo de computo [200%]; Escritorio [200%]; Internet; Silla [200%] → Juan Carlos Suarez; Energia; Equipo de computo [200%]; Escritorio [200%]; Internet; Silla [200%] |
| 19 | Caso de uso extendido |  |  |  |  |  |  | resources Nicolas Rodriguez; Eliseo Ricaurte; Juan Carlos Suarez; Maria de los Angeles Ordoñez; Energia; Equipo de computo [400%]; Escritorio [400%]; Internet [400%]; Silla [400%] → Nicolas Rodriguez; Juan Carlos Suarez; Energia; Equipo de computo [400%]; Escritorio [400%]; Internet [400%]; Silla [400%] |
| 24 | Uso de sistemas de integración continua |  |  |  |  |  |  | resources Eliseo Ricaurte; Energia; Equipo de computo; Escritorio; Internet; Microsoft project; Silla → Energia; Equipo de computo; Escritorio; Internet; Microsoft project; Silla |
| 28 | Diagrama de flujo de proceso BPMN |  |  |  |  |  |  | resources Juan Carlos Suarez; Maria de los Angeles Ordoñez; Energia; Equipo de computo [200%]; Escritorio [200%]; Internet [200%]; Silla [200%] → Juan Carlos Suarez; Energia; Equipo de computo [200%]; Escritorio [200%]; Internet [200%]; Silla [200%] |
| 31 | Diagrama de clases |  |  |  |  |  |  | resources Eliseo Ricaurte; Energia; Equipo de computo; Escritorio; Internet; Silla → Energia; Equipo de computo; Escritorio; Internet; Silla |
| 32 | **3. Ejecucion:** |  |  |  | 37% → 47% |  |  |  |
| 38 | Prototipo funcional: Mockup |  |  |  |  |  |  | was named Prototipo no funcional: Mockup |
| 39 | Prototipo no funcional: HTML y CCS |  |  |  |  |  |  | resources Eliseo Ricaurte; Energia; Equipo de computo; Escritorio; Internet; Juan Carlos Suarez; Nicolas Rodriguez; Paola Osorio; Silla → Energia; Equipo de computo; Escritorio; Internet; Juan Carlos Suarez; Nicolas Rodriguez; Paola Osorio; Silla |
| 40 | **Codificacion y conexión con la base de datos** | 2021-10-15 → 2021-11-03 A (+19d) |  | 55d → 42d | 0% → 23% | none → 0d |  |  |
| 41 | Codificacion y manejo de CRUD | 2021-10-15 → 2021-12-01 (+47d) | 2021-10-25 → 2021-12-09 (+45d) |  |  |  |  | constraint start no earlier than 2021-10-15 → start no earlier than 2021-12-01; resources Eliseo Ricaurte; Nicolas Rodriguez; Juan Carlos Suarez; Paola Osorio; Energia; Equipo de computo; Escritorio; Internet; Silla → Nicolas Rodriguez; Paola Osorio; Energia; Equipo de computo; Escritorio; Internet; Silla |
| 42 | Conexion base de datos | 2021-11-03 A | 2021-11-05 A |  | 0% → 100% |  |  | resources Eliseo Ricaurte; Nicolas Rodriguez; Juan Carlos Suarez; Paola Osorio; Energia; Equipo de computo; Escritorio; Internet; Silla → Nicolas Rodriguez; Juan Carlos Suarez; Paola Osorio; Energia; Equipo de computo; Escritorio; Internet; Silla |
| 43 | Crud funcional modulos del sistema |  | 2021-12-03 → 2021-12-09 (+6d) | 3d → 6.75d |  |  |  | resources Eliseo Ricaurte; Juan Carlos Suarez; Nicolas Rodriguez; Paola Osorio; Energia; Equipo de computo; Escritorio; Internet; Silla → Nicolas Rodriguez; Paola Osorio; Energia; Equipo de computo; Escritorio; Internet; Silla |
| 44 | Informe de migración de datos | 2021-12-30 A | 2021-12-30 A |  | 0% → 100% |  |  | resources Eliseo Ricaurte; Juan Carlos Suarez; Nicolas Rodriguez; Paola Osorio; Energia; Equipo de computo; Escritorio; Internet; Silla → Nicolas Rodriguez; Energia; Equipo de computo; Escritorio; Internet; Silla |
| 46 | Cuadro comparativo de proveedores |  |  |  |  |  |  | resources Eliseo Ricaurte; Juan Carlos Suarez; Nicolas Rodriguez; Paola Osorio; Energia; Equipo de computo; Escritorio; Internet; Silla → Juan Carlos Suarez; Energia; Equipo de computo; Escritorio; Internet; Silla |
| 47 | Contrato de desarrollo |  |  |  |  |  |  | resources Juan Carlos Suarez; Eliseo Ricaurte; Nicolas Rodriguez; Paola Osorio; Energia; Equipo de computo; Escritorio; Internet; Silla → Juan Carlos Suarez; Energia; Equipo de computo; Escritorio; Internet; Silla |
| 48 | **5. Evaluacion: Pruebas y construccion de manuales** |  |  |  | 0% → 36% |  |  | was named 5. Evaluacion: Construccion de manuales |
| 50 | Documentación de las pruebas |  |  |  |  |  |  | resources Eliseo Ricaurte; Juan Carlos Suarez; Nicolas Rodriguez; Paola Osorio; Energia; Equipo de computo; Escritorio; Internet; Silla → Juan Carlos Suarez; Energia; Equipo de computo; Escritorio; Internet; Silla |
| 51 | Pruebas (unitarias de caja blanca) | 2021-12-09 → 2021-12-10 (+1d) | 2021-12-29 → 2021-12-10 (-19d) | 15d → 0.25d |  | none → 115.75d | 50 → 41 | was named Pruebas (unitarias, de caja negra y blanca); constraint none → start no earlier than 2021-12-03; resources AWS MySQL Aurora; Juan Carlos Suarez; Nicolas Rodriguez; Paola Osorio; Eliseo Ricaurte; AWS Data Pipeline; Energia; Equipo de computo; Escritorio; Internet; Silla → Byethost; Paola Osorio; Energia; Equipo de computo; Escritorio; Internet; Silla |
| 52 | **Manuales** | 2021-12-31 → 2021-11-24 A (-37d) | 2022-05-20 → 2021-11-25 (-176d) | 101d → 1.75d | 0% → 100% |  |  |  |
| 53 | Manual de operación y manual de usuario | 2022-05-12 → 2021-11-24 A (-169d) | 2022-05-20 → 2021-11-24 A (-177d) | 7d → 0.92d | 0% → 100% |  | 50 → 38 | constraint start no earlier than 2022-05-12 → finish no earlier than 2021-11-24; resources Eliseo Ricaurte; Juan Carlos Suarez; Nicolas Rodriguez; Paola Osorio; Energia; Equipo de computo; Escritorio; Internet; Silla → Juan Carlos Suarez; Energia; Equipo de computo [8711.1%]; Escritorio [8711.1%]; Internet [8711.1%]; Silla [8711.1%] |
| 54 | Informe tecnico y manual de instalacion | 2021-12-31 → 2021-11-24 A (-37d) | 2022-01-10 → 2021-11-24 A (-47d) | 7d → 0.93d | 0% → 100% |  | 50 → 38 | was named Manual tecnico y manual de instalacion; constraint finish no earlier than 2020-12-01 → finish no earlier than 2021-11-24; resources Eliseo Ricaurte; Juan Carlos Suarez; Nicolas Rodriguez; Paola Osorio; Energia; Equipo de computo; Escritorio; Internet; Silla → Juan Carlos Suarez; Energia; Equipo de computo [5600%]; Escritorio [5600%]; Internet [5600%]; Silla [5600%] |

## Version 7 (saved 2021-12-13, file Fase II - Diagrama Gantt v3.4.mpp)

Last finish stays 2022-05-20. Complete tasks 32 → 37.

Added:

| ID | Task | Duration | Start | Finish | Predecessors | Resources |
| --- | --- | --- | --- | --- | --- | --- |
| 55 | Manual de instalacion | 0.12d? | 2021-11-24 09:00 A | 2021-11-24 10:30 A |  | Juan Carlos Suarez; Energia; Equipo de computo; Escritorio; Internet; Silla; Paquete de office |
| 56 | **Planes** | 0.19d? | 2021-11-15 09:00 A | 2021-11-15 10:30 A |  |  |
| 57 | Plan de migracion de datos | 0.19d? | 2021-11-15 09:00 A | 2021-11-15 10:30 A | 34 | Energia; Equipo de computo; Escritorio; Internet; Nicolas Rodriguez; Paquete de office; Silla |
| 58 | Plan de instalacion | 0.19d? | 2021-11-15 09:00 A | 2021-11-15 10:30 A | 55 | Energia; Equipo de computo; Escritorio; Internet; Juan Carlos Suarez; Paquete de office; Silla |
| 59 | Plan de respaldo | 0.19d? | 2021-11-15 09:00 A | 2021-11-15 10:30 A |  | Energia; Equipo de computo; Escritorio; Internet; Juan Carlos Suarez; Paquete de office; Silla |

Changed:

| ID | Task | Start | Finish | Duration | Complete | Predecessors | Other |
| --- | --- | --- | --- | --- | --- | --- | --- |
| 1 | **Sistema de información para la gestión de la producción avícola de traspatio urbana y periurbana con vocación de postura** | 2020-12-01 A → 2020-12-01 09:00 A | 2022-05-20 → 2022-05-20 19:00 |  | 70% → 74% |  |  |
| 2 | **1. Analisis** | 2020-12-01 A → 2020-12-01 09:00 A | 2021-03-25 → 2021-03-25 19:00 |  |  |  |  |
| 3 | **Componente Metodologico** | 2020-12-01 A → 2020-12-01 09:00 A | 2021-03-25 → 2021-03-25 19:00 |  |  |  |  |
| 4 | Nombre del proyecto | 2020-12-01 A → 2020-12-01 09:00 A | 2020-12-01 A → 2020-12-01 09:30 A |  |  |  |  |
| 5 | Objetivo general | 2021-01-25 A → 2021-01-25 09:00 A | 2021-01-25 A → 2021-01-25 17:00 A |  |  |  | constraint finish no earlier than 2021-01-25 → finish no earlier than 2021-01-25 17:00 |
| 6 | Objetivos especificos | 2021-01-25 A → 2021-01-25 09:00 A | 2021-02-26 A → 2021-02-26 17:00 A |  |  |  | constraint finish no earlier than 2021-01-25 → finish no earlier than 2021-01-25 17:00 |
| 7 | Planteamiento del problema | 2021-01-25 A → 2021-01-25 09:00 A | 2021-01-26 A → 2021-01-26 17:00 A |  |  |  | constraint start no earlier than 2021-01-25 → start no earlier than 2021-01-25 09:00 |
| 8 | Alcance del proyecto | 2021-01-26 A → 2021-01-26 09:00 A | 2021-01-27 A → 2021-01-27 16:00 A |  |  |  |  |
| 9 | Justificacion | 2021-01-27 A → 2021-01-27 09:00 A | 2021-01-28 A → 2021-01-28 17:00 A |  |  |  | constraint start no earlier than 2021-01-27 → start no earlier than 2021-01-27 09:00 |
| 10 | **Levantamiento de informacion** | 2021-02-25 → 2021-02-25 17:00 | 2021-03-25 → 2021-03-25 19:00 |  |  |  |  |
| 11 | Entrevista a experto avicola | 2021-02-03 A → 2021-02-03 09:00 A | 2021-02-03 A → 2021-02-03 11:00 A |  |  |  | constraint finish no earlier than 2021-02-03 → finish no earlier than 2021-02-03 17:00 |
| 12 | Entrevista a productor avicola | 2021-02-05 A → 2021-02-05 09:00 A | 2021-02-08 A → 2021-02-08 17:00 A |  |  |  | constraint start no earlier than 2021-02-05 → start no earlier than 2021-02-05 09:00 |
| 13 | Encuesta | 2021-02-01 A → 2021-02-01 09:00 A | 2021-03-05 A → 2021-03-05 17:00 A |  |  |  | constraint finish no earlier than 2021-02-05 → finish no earlier than 2021-02-05 17:00 |
| 14 | **2. Planeacion:** | 2021-03-04 A → 2021-03-04 09:00 A | 2021-09-24 A → 2021-09-24 09:30 A |  |  |  |  |
| 15 | **Informe de Requerimientos (Estandar IEEE 830)** | 2021-03-04 A → 2021-03-04 09:00 A | 2021-04-01 → 2021-04-01 11:00 |  |  |  |  |
| 16 | Requerimientos funcionales y no funcionales | 2021-03-05 A → 2021-03-05 09:00 A | 2021-03-08 A → 2021-03-08 17:00 A |  |  |  |  |
| 17 | Especificaciones de casos de uso | 2021-03-08 A → 2021-03-08 10:00 A | 2021-03-09 A → 2021-03-09 17:00 A |  |  |  | constraint start no earlier than 2020-12-03 → start no earlier than 2020-12-03 09:00 |
| 18 | Diagrama de casos de uso | 2021-03-04 A → 2021-03-04 09:00 A | 2021-03-05 A → 2021-03-05 17:00 A |  |  |  |  |
| 19 | Caso de uso extendido | 2021-03-09 A → 2021-03-09 09:00 A | 2021-03-10 A → 2021-03-10 17:00 A |  |  |  |  |
| 20 | **Ejecucion admnistrativa** | 2021-05-03 A → 2021-05-03 09:00 A | 2021-09-24 A → 2021-09-24 09:30 A |  |  |  |  |
| 21 | Cronograma, presupuesto y selección de personal | 2021-05-03 A → 2021-05-03 09:00 A | 2021-05-04 A → 2021-05-04 17:00 A |  |  |  |  |
| 22 | Informe de costos (hardware y software) | 2021-05-05 A → 2021-05-05 09:00 A | 2021-05-05 A → 2021-05-05 19:00 A |  |  |  |  |
| 23 | Actualizacion de Informe de costos (hardware y software) | 2021-05-17 A → 2021-05-17 09:00 A | 2021-05-17 A → 2021-05-17 19:00 A |  |  |  |  |
| 24 | Uso de sistemas de integración continua | 2021-09-24 A → 2021-09-24 09:00 A | 2021-09-24 A → 2021-09-24 09:30 A |  |  |  | constraint start no earlier than 2021-09-24 → start no earlier than 2021-09-24 09:00 |
| 25 | Inventario de hardware y software | 2021-05-06 A → 2021-05-06 09:00 A | 2021-05-06 A → 2021-05-06 19:00 A |  |  |  |  |
| 26 | **Diseño conceptual** | 2021-03-12 A → 2021-03-12 09:00 A | 2021-05-11 A → 2021-05-11 19:00 |  |  |  |  |
| 27 | Mapa de procesos BPMN | 2021-03-18 A → 2021-03-18 15:00 A | 2021-03-18 A → 2021-03-18 17:00 A |  |  |  | constraint start no earlier than 2020-12-09 → start no earlier than 2020-12-09 09:00 |
| 28 | Diagrama de flujo de proceso BPMN | 2021-03-12 A → 2021-03-12 09:00 A | 2021-03-15 A → 2021-03-15 17:00 A |  |  |  | constraint start no earlier than 2020-12-09 → start no earlier than 2020-12-09 09:00 |
| 29 | Diagrama de despliegue | 2021-05-10 A → 2021-05-10 09:00 A | 2021-05-10 A → 2021-05-10 11:00 A |  |  |  | constraint start no earlier than 2021-05-10 → start no earlier than 2021-05-10 09:00 |
| 30 | Modelo entidad-relacion y diccionario de datos | 2021-05-10 A → 2021-05-10 09:00 A | 2021-05-10 A → 2021-05-10 19:00 A |  |  |  | constraint start no earlier than 2021-05-10 → start no earlier than 2021-05-10 09:00 |
| 31 | Diagrama de clases | 2021-05-10 A → 2021-05-10 15:00 A | 2021-05-11 A → 2021-05-11 17:00 A |  |  |  |  |
| 32 | **3. Ejecucion:** | 2021-05-10 A → 2021-05-10 09:00 A | 2021-12-30 → 2021-12-30 19:00 |  | 47% → 51% |  |  |
| 33 | **Base de datos** | 2021-09-13 A → 2021-09-13 09:00 A | 2021-10-28 → 2021-10-28 17:00 |  |  |  |  |
| 34 | Construccion de la Base de Datos (DDL) | 2021-09-13 A → 2021-09-13 09:00 A | 2021-09-13 A → 2021-09-13 17:00 A |  |  |  | constraint finish no earlier than 2021-09-13 → finish no earlier than 2021-09-13 17:00 |
| 35 | Datos insertados en la Base de Datos (DML) | 2021-09-17 A → 2021-09-17 09:00 A | 2021-09-17 A → 2021-09-17 19:00 A |  |  |  | constraint start no earlier than 2021-09-17 → start no earlier than 2021-09-17 09:00 |
| 36 | Consultas y Joins en la Base de Datos (DML) | 2021-09-17 A → 2021-09-17 09:00 A | 2021-09-20 A → 2021-09-20 17:00 A |  |  |  | constraint start no earlier than 2021-09-17 → start no earlier than 2021-09-17 09:00 |
| 37 | **Prototipado** | 2021-05-10 A → 2021-05-10 09:00 A | 2021-09-22 A → 2021-09-22 17:00 A |  |  |  |  |
| 38 | Prototipo funcional: Mockup | 2021-05-10 A → 2021-05-10 09:00 A | 2021-05-13 A → 2021-05-13 19:00 A |  |  |  | constraint start no earlier than 2021-05-10 → start no earlier than 2021-05-10 09:00 |
| 39 | Prototipo no funcional: HTML y CCS | 2021-09-22 A → 2021-09-22 09:00 A | 2021-09-22 A → 2021-09-22 17:00 A |  |  |  | constraint finish no earlier than 2021-09-22 → finish no earlier than 2021-09-22 17:00 |
| 40 | **Codificacion y conexión con la base de datos** | 2021-11-03 A → 2021-11-03 09:00 A | 2021-12-30 → 2021-12-09 19:00 (-21d) | 42d → 27d | 23% → 27% |  |  |
| 41 | Codificacion y manejo de CRUD | 2021-12-01 → 2021-12-01 09:00 A | 2021-12-09 → 2021-12-09 19:00 |  | 0% → 10% |  | constraint start no earlier than 2021-12-01 → start no earlier than 2021-12-01 09:00 |
| 42 | Conexion base de datos | 2021-11-03 A → 2021-11-03 09:00 A | 2021-11-05 A → 2021-11-05 19:00 A |  |  |  | constraint start no earlier than 2021-11-03 → start no earlier than 2021-11-03 09:00 |
| 43 | Crud funcional modulos del sistema | 2021-12-01 → 2021-12-01 09:00 A | 2021-12-09 → 2021-12-09 17:00 |  | 0% → 5% |  | constraint start no earlier than 2021-12-01 → start no earlier than 2021-12-01 09:00 |
| 44 | Informe de migración de datos | 2021-12-30 A → 2021-12-09 09:00 A (-21d) | 2021-12-30 A → 2021-12-09 17:00 A (-21d) | 1d → 0.75d |  | 51 → 57, 51 | resources Nicolas Rodriguez; Energia; Equipo de computo; Escritorio; Internet; Silla → Energia; Equipo de computo; Escritorio; Internet; Silla; Juan Carlos Suarez; Paquete de office |
| 45 | **4. Negociacion** | 2022-03-11 → 2022-03-11 09:00 | 2022-03-16 → 2022-03-16 19:00 |  |  |  |  |
| 46 | Cuadro comparativo de proveedores | 2022-03-11 → 2022-03-11 09:00 | 2022-03-11 → 2022-03-11 19:00 |  |  |  | resources Juan Carlos Suarez; Energia; Equipo de computo; Escritorio; Internet; Silla → none |
| 47 | Contrato de desarrollo | 2022-03-14 → 2022-03-14 09:00 | 2022-03-16 → 2022-03-16 19:00 |  |  |  | resources Juan Carlos Suarez; Energia; Equipo de computo; Escritorio; Internet; Silla → none |
| 48 | **5. Evaluacion: Pruebas y construccion de planes y manuales** | 2021-12-06 → 2021-12-06 09:00 | 2022-05-20 → 2022-05-20 19:00 |  | 36% → 96% |  | was named 5. Evaluacion: Pruebas y construccion de manuales |
| 49 | **Pruebas** | 2021-12-06 → 2021-12-06 09:00 | 2021-12-29 → 2021-12-29 19:00 |  | 0% → 90% |  |  |
| 50 | Documentación de las pruebas | 2021-12-06 → 2021-12-11 09:00 A (+5d) | 2021-12-08 → 2021-12-11 12:50 A (+3d) | 3d → 0.48d | 0% → 100% | 43 → 51, 43 | resources Juan Carlos Suarez; Energia; Equipo de computo; Escritorio; Internet; Silla → Paola Osorio; Energia; Equipo de computo [30%]; Escritorio [30%]; Internet [30%]; Silla [30%] |
| 51 | Pruebas (unitarias de caja blanca y negra) | 2021-12-10 → 2021-12-10 09:00 A | 2021-12-10 → 2021-12-10 11:00 |  | 0% → 70% |  | was named Pruebas (unitarias de caja blanca); constraint start no earlier than 2021-12-03 → start no earlier than 2021-12-03 09:00 |
| 52 | **Manuales** | 2021-11-24 A → 2021-11-24 09:00 A | 2021-11-25 → 2021-11-25 17:40 A | 1.75d → 1.83d |  |  |  |
| 53 | Manual de usuario | 2021-11-24 A → 2021-11-24 09:00 A | 2021-11-24 A → 2021-11-25 17:40 A (+1d) | 0.92d → 0.24d |  |  | was named Manual de operación y manual de usuario; constraint finish no earlier than 2021-11-24 → finish no earlier than 2021-11-24 17:00; resources Juan Carlos Suarez; Energia; Equipo de computo [8711.1%]; Escritorio [8711.1%]; Internet [8711.1%]; Silla [8711.1%] → Energia; Equipo de computo; Escritorio; Internet; Silla; Juan Carlos Suarez; Paquete de office |
| 54 | Manual tecnico (informe) | 2021-11-24 A → 2021-11-24 09:00 A | 2021-11-24 A → 2021-11-24 17:00 A | 0.93d → 0.19d |  |  | was named Informe tecnico y manual de instalacion; constraint finish no earlier than 2021-11-24 → finish no earlier than 2021-11-24 17:00; resources Juan Carlos Suarez; Energia; Equipo de computo [5600%]; Escritorio [5600%]; Internet [5600%]; Silla [5600%] → Energia; Equipo de computo; Escritorio; Internet; Silla; Juan Carlos Suarez; Paquete de office |
